# Plan de proyecto

Schedule from MS Project, 2018-10-22 to 2018-11-21, costs in $.

## Calendars

- Estándar: Mon-Fri 09:00-13:00, 15:00-19:00; Sat-Sun off.

## Resources

| Resource | Group | Rate |
| --- | --- | --- |
| Juan Carlos Domínguez Domínguez | 3 | 30 |
| Alberto Hernández Gómez | 3 | 30 |
| Kevín Yaír Hernández Macías | 3 | 30 |
| Carlos Alberto Onorio Torres | 3 | 30 |

## Schedule

| ID | WBS | Task | Duration | Start | Finish | Predecessors | Total slack | Free slack | Constraint | Resources | Work | Cost |
| --- | --- | --- | --- | --- | --- | --- | --- | --- | --- | --- | --- | --- |
| 1 | 1 | **Aplicación para la Movilidad en el Transporte Público Urbano** | 23d | 2018-10-22 | 2018-11-21 |  | 0d |  |  |  | 576h | 17,280 |
| 2 | 1.1 | **Definición de artefactos** | 9d | 2018-10-22 | 2018-11-01 |  | 14d |  |  |  | 96h | 2,880 |
| 3 | 1.1.1 | Solicitud de desarrollo de software | 1d | 2018-10-22 | 2018-10-22 |  | 14d | 0d | start no earlier than 2018-10-22 | Carlos Alberto Onorio Torres | 8h | 240 |
| 4 | 1.1.2 | Análisis de factibilidad | 2d | 2018-10-23 | 2018-10-24 | 3 | 14d | 0d |  | Alberto Hernández Gómez | 16h | 480 |
| 5 | 1.1.3 | Plan de gestión de riesgos | 2d | 2018-10-25 | 2018-10-26 | 4 | 14d | 0d |  | Kevín Yaír Hernández Macías | 16h | 480 |
| 6 | 1.1.4 | Plan de calidad | 3d | 2018-10-29 | 2018-10-31 | 5 | 14d | 0d | finish no earlier than 2018-10-31 | Carlos Alberto Onorio Torres | 24h | 720 |
| 7 | 1.1.5 | Plan de medición | 3d | 2018-10-29 | 2018-10-31 | 5 | 14d | 0d | finish no earlier than 2018-10-31 | Juan Carlos Domínguez Domínguez | 24h | 720 |
| 8 | 1.1.6 | Plan de administración y control de cambio | 1d | 2018-11-01 | 2018-11-01 | 7, 6 | 14d |  | start no earlier than 2018-10-31 | Carlos Alberto Onorio Torres | 8h | 240 |
| 9 | 1.2 | **Requerimientos** | 7d | 2018-11-01 | 2018-11-09 |  | 8d |  |  |  | 336h | 10,080 |
| 10 | 1.2.1 | Resultado de análisis documental | 2d | 2018-11-01 | 2018-11-02 |  | 8d | 0d | start no earlier than 2018-11-01 | Alberto Hernández Gómez; Carlos Alberto Onorio Torres; Juan Carlos Domínguez Domínguez; Kevín Yaír Hernández Macías | 64h | 1,920 |
| 11 | 1.2.2 | Prototipo no funcional | 2d | 2018-11-01 | 2018-11-02 |  | 8d | 0d | start no earlier than 2018-11-01 | Alberto Hernández Gómez; Carlos Alberto Onorio Torres; Juan Carlos Domínguez Domínguez; Kevín Yaír Hernández Macías | 64h | 1,920 |
| 12 | 1.2.3 | Diagrama de casos de uso | 1d | 2018-11-05 | 2018-11-05 | 10, 11 | 12d |  |  | Alberto Hernández Gómez | 8h | 240 |
| 13 | 1.2.4 | Descripción de casos de uso | 3d | 2018-11-05 | 2018-11-07 | 10, 11 | 8d | 0d |  | Alberto Hernández Gómez; Carlos Alberto Onorio Torres; Juan Carlos Domínguez Domínguez; Kevín Yaír Hernández Macías | 96h | 2,880 |
| 14 | 1.2.5 | Checklist para evaluación de requerimientos | 1d | 2018-11-07 | 2018-11-07 |  | 8d | 0d | start no earlier than 2018-11-07 | Carlos Alberto Onorio Torres | 8h | 240 |
| 15 | 1.2.6 | Especificación de requerimientos | 2d | 2018-11-08 | 2018-11-09 | 13 | 8d |  |  | Alberto Hernández Gómez | 16h | 480 |
| 16 | 1.2.7 | Evaluación de requerimientos | 2d | 2018-11-08 | 2018-11-09 | 13, 14 | 8d |  | start no earlier than 2018-11-08 | Alberto Hernández Gómez; Carlos Alberto Onorio Torres; Juan Carlos Domínguez Domínguez; Kevín Yaír Hernández Macías | 64h | 1,920 |
| 17 | 1.2.8 | Estimación de esfuerzo TCPU | 2d | 2018-11-08 | 2018-11-09 | 13 | 8d |  | start no earlier than 2018-11-08 | Juan Carlos Domínguez Domínguez | 16h | 480 |
| 18 | 1.3 | **Análisis/Diseño** | 6d | 2018-11-12 | 2018-11-19 |  | 2d |  |  |  | 104h | 3,120 |
| 19 | 1.3.1 | Modelo de dominio | 2d | 2018-11-12 | 2018-11-13 |  | 3d | 0d | start no earlier than 2018-11-12 | Carlos Alberto Onorio Torres | 16h | 480 |
| 20 | 1.3.2 | Diagrama de robustez | 1d | 2018-11-14 | 2018-11-14 | 19 | 3d | 0d |  | Alberto Hernández Gómez | 8h | 240 |
| 21 | 1.3.3 | Modelo de dominio actualizado | 1d | 2018-11-14 | 2018-11-14 | 19 | 3d | 0d | start no earlier than 2018-11-14 | Kevín Yaír Hernández Macías | 8h | 240 |
| 22 | 1.3.4 | Diagrama de secuencia | 2d | 2018-11-15 | 2018-11-16 | 20 | 3d |  |  | Juan Carlos Domínguez Domínguez | 16h | 480 |
| 23 | 1.3.5 | Diagrama de clases | 2d | 2018-11-15 | 2018-11-16 | 21 | 3d |  |  | Alberto Hernández Gómez | 16h | 480 |
| 24 | 1.3.6 | Checklist para evaluación de diseño | 1d | 2018-11-16 | 2018-11-16 |  | 2d | 0d | start no earlier than 2018-11-16 | Carlos Alberto Onorio Torres | 8h | 240 |
| 25 | 1.3.7 | Evaluación de diseño | 1d | 2018-11-19 | 2018-11-19 | 24 | 2d |  |  | Alberto Hernández Gómez; Carlos Alberto Onorio Torres; Juan Carlos Domínguez Domínguez; Kevín Yaír Hernández Macías | 32h | 960 |

| ID | WBS | Task | Duration | Start | Finish | Predecessors | Total slack | Constraint | Resources | Work | Cost |
| --- | --- | --- | --- | --- | --- | --- | --- | --- | --- | --- | --- |
| 26 | 1.4 | **Cierre** | 2d | 2018-11-20 | 2018-11-21 |  | 0d |  |  | 40h | 1,200 |
| 27 | 1.4.1 | Portafolio de proyecto | 1d | 2018-11-20 | 2018-11-20 |  | 0d | start no earlier than 2018-11-20 | Kevín Yaír Hernández Macías | 8h | 240 |
| 28 | 1.4.2 | Presentación de proyecto | 1d | 2018-11-21 | 2018-11-21 | 27 | 0d |  | Alberto Hernández Gómez; Carlos Alberto Onorio Torres; Juan Carlos Domínguez Domínguez; Kevín Yaír Hernández Macías | 32h | 960 |
